# Cronograma Consolidado STI 39783 - Velox portfolio - RII

Schedule from MS Project, 2015-01-12 to 2015-02-13, status date 2011-01-17.

## Calendars

- Padrão: Mon-Fri 08:00-12:00, 13:00-17:00; Sat-Sun off.

## Resources

| Resource |
| --- |
| Squadra |
| Oi |
| CpQD |
| Eng |
| Wedo |
| IBM |
| Oi/Usuário |
| Oi / IBM |
| Oi/IBM |
| AsGa |

## Schedule

| ID | WBS | Task | Type | Duration | Start | Finish | Predecessors | Total slack | Free slack | Constraint |
| --- | --- | --- | --- | --- | --- | --- | --- | --- | --- | --- |
| 1 | 1 | **EDS_CIDIZ_2015_00001 Automatizar Relatório de Fechamento Semanal / Mensal** |  | 25d | 2015-01-12 | 2015-02-13 |  |  |  |  |
| 2 | 1.1 | Retomada da demanda |  | 1d | 2015-01-12 | 2015-01-12 |  | 24d |  | start no earlier than 2015-01-12 |
| 3 | 1.2 | **Especificação Funcional** |  | 1d | 2015-01-12 | 2015-01-12 |  |  |  |  |
| 4 | 1.2.1 | **Cidiz TI** |  | 1d | 2015-01-12 | 2015-01-12 |  |  |  |  |
| 5 | 1.2.1.1 | **Analise, Gerencia e Desenvolvimento** |  | 1d | 2015-01-12 | 2015-01-12 |  |  |  |  |
| 6 | 1.2.1.1.1 | Elaborar EDS |  | 3d | 2015-01-13 | 2015-01-15 |  | -24d | 0d | finish no earlier than 2015-01-15 |
| 7 | 1.2.1.1.2 | Validar EDS - TI |  | 1d | 2015-01-16 | 2015-01-16 | 6 | -24d | 0d |  |
| 8 | 1.2.1.1.3 | Validar EDS - Usuário |  | 1d | 2015-01-19 | 2015-01-19 | 7 | -24d | 0d |  |
| 9 | 1.3 | **Especificação Técnica** |  | 1d | 2015-01-12 | 2015-01-12 |  |  |  |  |
| 10 | 1.3.1 | **Cidiz TI** |  | 1d? | 2015-01-12 | 2015-01-12 |  |  |  |  |
| 11 | 1.3.1.1 | **Analise, Gerencia e Desenvolvimento** |  | 1d? | 2015-01-12 | 2015-01-12 |  |  |  |  |
| 12 | 1.3.1.1.1 | Elaborar Especificação Técnica | milestone | 0d | 2015-01-12 | 2015-01-12 |  | 1d |  |  |
| 13 | 1.3.1.1.2 | Validar Especificação Técnica - TI | milestone | 0d | 2015-01-12 | 2015-01-12 |  | 1d |  |  |
| 14 | 1.4 | **Construção** |  | 1d? | 2015-01-12 | 2015-01-12 |  |  |  |  |
| 15 | 1.4.1 | **Cidiz** |  | 1d | 2015-01-12 | 2015-01-12 |  |  |  |  |
| 16 | 1.4.1.1 | **Desenvolvimento** |  | 1d | 2015-01-12 | 2015-01-12 |  |  |  |  |
| 17 | 1.4.1.1.1 | Executar Construção + teste unitário |  | 17d | 2015-01-20 | 2015-02-11 | 8 | -24d | 0d |  |
| 18 | 1.5 | **Planejamento de testes** |  | 1d | 2015-01-12 | 2015-01-12 |  |  |  |  |
| 19 | 1.5.1 | **Plano Teste de Sistemas** |  | 1d? | 2015-01-12 | 2015-01-12 |  |  |  |  |
| 20 | 1.5.1.1 | **Cidiz TI** |  | 0d | 2015-01-12 | 2015-01-12 |  |  |  |  |
| 21 | 1.5.1.1.1 | **Analise e Desenvolvimento** |  | 0d | 2015-01-12 | 2015-01-12 |  |  |  |  |
| 22 | 1.5.1.1.1.1 | Plano de testes de Sistemas |  | 1d | 2015-01-12 | 2015-01-12 |  | -1d | 0d |  |
| 23 | 1.5.1.1.1.2 | Aprovar Plano de testes de Sistemas |  | 1d | 2015-01-12 | 2015-01-12 |  | -1d | 0d |  |
| 24 | 1.5.2 | **Plano Testes Integrados** |  | 1d? | 2015-01-12 | 2015-01-12 |  |  |  |  |
| 25 | 1.5.2.1 | **Cidiz TI** |  | 5d | 2015-01-12 | 2015-01-16 |  | -4d | 0d |  |
| 26 | 1.5.2.1.1 | Plano de testes integrado |  | 5d | 2015-01-12 | 2015-01-16 |  | -4d | 0d | start no earlier than 2011-11-04 |
| 27 | 1.5.2.1.2 | Aprovar Plano de testes integrado |  | 5d | 2015-01-12 | 2015-01-16 |  | -4d | 0d |  |

| ID | WBS | Task | Type | Duration | Start | Finish | Predecessors | Baseline start | Baseline finish | Baseline duration | Baseline 1 start | Baseline 1 finish | Total slack | Free slack | Constraint |
| --- | --- | --- | --- | --- | --- | --- | --- | --- | --- | --- | --- | --- | --- | --- | --- |
| 28 | 1.5.3 | **Plano Testes de UAT** |  | 1d? | 2015-01-12 | 2015-01-12 |  |  |  |  |  |  |  |  |  |
| 29 | 1.5.3.1 | **Cidiz TI** |  | 1d? | 2015-01-12 | 2015-01-12 |  |  |  |  |  |  |  |  |  |
| 30 | 1.5.3.1.1 | Plano de testes integrado | milestone | 0d | 2015-01-12 | 2015-01-12 |  |  |  |  |  |  | 1d |  |  |
| 31 | 1.5.3.1.2 | Aprovar Plano de testes integrado | milestone | 0d | 2015-01-12 | 2015-01-12 |  |  |  |  |  |  | 1d |  |  |
| 32 | 1.5.4 | **Plano Teste de Performance** |  | 1d? | 2015-01-12 | 2015-01-12 |  |  |  |  |  |  |  |  |  |
| 33 | 1.5.4.1 | **Cidiz TI** |  | 1d? | 2015-01-12 | 2015-01-12 |  |  |  |  |  |  |  |  |  |
| 34 | 1.5.4.1.1 | Plano de Testes de Performance | milestone | 0d | 2015-01-12 | 2015-01-12 |  |  |  |  |  |  | 1d |  |  |
| 35 | 1.5.4.1.2 | Aprovar Plano de Testes de Performance | milestone | 0d | 2015-01-12 | 2015-01-12 |  |  |  |  |  |  | 1d |  |  |
| 36 | 1.6 | **Execução de Testes** |  | 1d | 2015-01-12 | 2015-01-12 |  |  |  |  |  |  |  |  |  |
| 37 | 1.6.1 | **Teste de Sistema** |  | 1d? | 2015-02-11 | 2015-02-11 |  |  |  |  |  |  |  |  |  |
| 38 | 1.6.1.1 | **Cidiz TI** |  | 1d? | 2015-02-11 | 2015-02-11 |  |  |  |  |  |  |  |  |  |
| 39 | 1.6.1.1.1 | **Cidiz** |  | 1d? | 2015-02-11 | 2015-02-11 |  |  |  |  |  |  |  |  |  |
| 40 | 1.6.1.1.1.1 | Executar testes de Sistemas |  | 1d | 2015-02-11 | 2015-02-11 |  |  |  |  |  |  | 2d |  | start no earlier than 2015-02-11 |
| 41 | 1.6.1.1.1.2 | Aprovar evidencias testes Sistemas |  | 1d | 2015-02-11 | 2015-02-11 |  |  |  |  |  |  | 2d |  | start no earlier than 2015-02-11 |
| 42 | 3.1.6 | **Teste Integrado** |  | 1d | 2015-01-12 | 2015-01-12 |  | 2008-07-03 | 2008-09-10 | 50d | 2008-05-14 | 2008-07-08 |  |  |  |
| 43 | 1.6.2.1 | Disponibilização do NDS e Engenharia para teste integrado | milestone | 0d | 2015-01-12 | 2015-01-12 |  |  |  |  |  |  | 1d |  |  |
| 44 | 1.6.2.2 | **Aprosionamento (Cidiz TI / Terceirizada )** |  | 1d | 2015-01-12 | 2015-01-12 |  |  |  |  |  |  |  |  |  |
| 45 | 1.6.2.2.1 | Merge TI (Cidiz TI) | milestone | 0d | 2015-01-12 | 2015-01-12 |  |  |  |  |  |  | 1d |  |  |
| 46 | 3.1.6.3.2 | Executar Teste de Conectividade | milestone | 0d | 2015-01-12 | 2015-01-12 |  | 2008-09-04 | 2008-09-10 | 5d | 2008-07-02 | 2008-07-08 | 1d |  |  |
| 47 | 1.6.2.2.3 | Executar Teste Integrado | milestone | 0d | 2015-01-12 | 2015-01-12 |  |  |  |  |  |  | 1d |  |  |
| 48 | 1.6.2.2.4 | Validar as evidências Teste Integrado - Oi | milestone | 0d | 2015-01-12 | 2015-01-12 |  |  |  |  |  |  | 1d |  |  |
| 49 | 1.6.2.3 | **Autenticação (Cidiz TI / Terceirizada)** |  | 1d | 2015-01-12 | 2015-01-12 |  |  |  |  |  |  |  |  |  |
| 50 | 1.6.2.3.1 | **Mediação Core** |  | 15d | 2015-01-12 | 2015-01-30 |  |  |  |  |  |  | -958d | 0d |  |
| 51 | 1.6.2.3.1.1 | Disponibilização de Massa de TI (enviada pela Engenharia) | milestone | 0d | 2015-01-12 | 2015-01-12 |  |  |  |  |  |  | -958d | 0d | start no earlier than 2011-05-09 |
| 52 | 1.6.2.3.1.2 | Executar Testes Integrado |  | 15d | 2015-01-12 | 2015-01-30 | 53SF |  |  |  |  |  | -19d | 0d |  |
| 53 | 1.6.2.3.1.3 | Validar as evidências Teste Integrado |  | 4d | 2015-01-12 | 2015-01-15 | 69SF |  |  |  |  |  | -4d | 0d |  |

| ID | WBS | Task | Type | Duration | Start | Finish | Predecessors | Baseline start | Baseline finish | Baseline duration | Baseline 1 start | Baseline 1 finish | Total slack | Free slack | Constraint |
| --- | --- | --- | --- | --- | --- | --- | --- | --- | --- | --- | --- | --- | --- | --- | --- |
| 54 | 1.6.2.3.2 | **GIM** |  | 15d | 2015-01-12 | 2015-01-30 |  |  |  |  |  |  | -14d | 0d |  |
| 55 | 1.6.2.3.2.1 | Aguardando massa de TI do MM |  | 2d | 2015-01-12 | 2015-01-13 | 52SS |  |  |  |  |  | -14d | 0d |  |
| 56 | 1.6.2.3.2.2 | Executar Testes Integrado |  | 8d | 2015-01-14 | 2015-01-23 | 55 |  |  |  |  |  | -14d | 0d |  |
| 57 | 1.6.2.3.2.3 | Validar as evidências Teste Integrado - Oi |  | 5d | 2015-01-26 | 2015-01-30 | 56 |  |  |  |  |  | -14d | 0d |  |
| 58 | 1.6.2.3.3 | **Oi Legal** |  | 24d | 2015-01-12 | 2015-02-12 |  |  |  |  |  |  | -23d | 0d |  |
| 59 | 1.6.2.3.3.1 | Executar Testes Integrado |  | 24d | 2015-01-12 | 2015-02-12 | 60SF |  |  |  |  |  | -23d | 0d | start no earlier than 2012-01-03 |
| 60 | 1.6.2.3.3.2 | Gerar Evidências |  | 1d | 2015-01-30 | 2015-01-30 | 52FF |  |  |  |  |  | -19d | 0d |  |
| 61 | 1.6.2.3.3.3 | Validar as evidências Teste Integrado - Oi |  | 5d | 2015-02-02 | 2015-02-06 | 60 |  |  |  |  |  | -19d | 0d |  |
| 62 | 1.6.2.3.4 | **SFA** |  | 12d | 2015-01-22 | 2015-02-06 |  |  |  |  |  |  | -19d | 0d |  |
| 63 | 1.6.2.3.4.1 | Executar Testes Integrado |  | 7d | 2015-01-22 | 2015-01-30 | 52FF |  |  |  |  |  | -19d | 0d |  |
| 64 | 1.6.2.3.4.2 | Validar as evidências Teste Integrado |  | 5d | 2015-02-02 | 2015-02-06 | 63 |  |  |  |  |  | -19d | 0d |  |
| 65 | 1.6.2.3.5 | **RAID** |  | 11d | 2015-01-12 | 2015-01-26 |  |  |  |  |  |  | -10d | 0d |  |
| 66 | 1.6.2.3.5.1 | Executar Testes Integrado |  | 6d | 2015-01-12 | 2015-01-19 |  |  |  |  |  |  | -10d | 0d | start no earlier than 2012-01-23 |
| 67 | 1.6.2.3.5.2 | Validar as evidências Teste Integrado |  | 5d | 2015-01-20 | 2015-01-26 | 66 |  |  |  |  |  | -10d | 0d |  |
| 68 | 3.1.8 | **UAT** |  | 1d | 2015-01-12 | 2015-01-12 |  | 2008-09-04 | 2008-09-24 | 15d | 2008-07-02 | 2008-07-22 |  |  |  |
| 69 | 1.6.3.1 | Executar UAT | milestone | 0d | 2015-01-12 | 2015-01-12 |  |  |  |  |  |  | 0d |  |  |
| 70 | 1.6.3.2 | Validar UAT | milestone | 0d | 2015-01-12 | 2015-01-12 |  |  |  |  |  |  | 1d |  |  |
| 71 | 3.1.6 | **Teste performance** |  | 1d | 2015-01-12 | 2015-01-12 |  | 2008-07-03 | 2008-09-10 | 50d | 2008-05-14 | 2008-07-08 |  |  |  |
| 72 | 1.6.4.1 | **Cidiz TI** |  | 1d | 2015-01-12 | 2015-01-12 |  |  |  |  |  |  |  |  |  |
| 73 | 1.6.4.1.1 | Preparação de massa e desenvolvimento de scripts | milestone | 0d | 2015-01-12 | 2015-01-12 |  |  |  |  |  |  | 1d |  |  |
| 74 | 3.1.6.3.2 | Execução Teste performance | milestone | 0d | 2015-01-12 | 2015-01-12 |  | 2008-09-04 | 2008-09-10 | 5d | 2008-07-02 | 2008-07-08 | 1d |  |  |
| 75 | 1.6.4.1.3 | Validar as evidências Teste Performance - Cidiz TI | milestone | 0d | 2015-01-12 | 2015-01-12 |  |  |  |  |  |  | 1d |  |  |
| 76 | 3.1.7 | **Runbook** |  | 1d | 2015-01-12 | 2015-01-12 |  | 2008-08-06 | 2008-08-13 | 6d | 2008-06-03 | 2008-06-10 |  |  |  |
| 77 | 1.7.1 | **Cidiz TI** |  | 1d? | 2015-01-12 | 2015-01-12 |  |  |  |  |  |  |  |  |  |
| 78 | 1.7.1.1 | **Cidiz** |  | 1d? | 2015-01-12 | 2015-01-12 |  |  |  |  |  |  |  |  |  |
| 79 | 1.7.1.1.1 | Elaborar Runbook Cidiz | milestone | 0d | 2015-01-12 | 2015-01-12 |  |  |  |  |  |  | 1d |  |  |
| 80 | 1.7.1.1.2 | Aprovar Runbook - Cidiz | milestone | 0d | 2015-01-12 | 2015-01-12 |  |  |  |  |  |  | 1d |  |  |

| ID | WBS | Task | Type | Duration | Start | Finish | Predecessors | Total slack | Free slack |
| --- | --- | --- | --- | --- | --- | --- | --- | --- | --- |
| 81 | 1.8 | **Teste de Regressão** |  | 1d | 2015-01-12 | 2015-01-12 |  |  |  |
| 82 | 1.8.1 | Execução Teste Regressão (Cidiz) | milestone | 0d | 2015-01-12 | 2015-01-12 |  | 1d |  |
| 83 | 1.9 | **Treinamento Cidiz** |  | 1d | 2015-01-12 | 2015-01-12 |  |  |  |
| 84 | 1.9.1 | Elaboração Material | milestone | 0d | 2015-01-12 | 2015-01-12 |  | 1d |  |
| 85 | 1.9.2 | Apresentação Presencial Material | milestone | 0d | 2015-01-12 | 2015-01-12 |  | 1d |  |
| 86 | 1.10 | **Implantação** |  | 1d | 2015-01-12 | 2015-01-12 |  |  |  |
| 87 | 1.10.1 | **Cidiz TI** |  | 1d | 2015-01-12 | 2015-01-12 |  |  |  |
| 88 | 1.10.1.1 | **Implantação Cidiz** |  | 1d | 2015-01-12 | 2015-01-12 |  |  |  |
| 89 | 1.10.1.1.1 | Elaborar plano de implantação | milestone | 0d | 2015-01-12 | 2015-01-12 |  | 1d |  |
| 90 | 1.10.1.1.2 | Validar plano de implantação | milestone | 0d | 2015-01-12 | 2015-01-12 |  | 1d |  |
| 91 | 1.10.1.1.3 | Data Limite de Candidatura | milestone | 0d | 2015-01-12 | 2015-01-12 |  | 1d |  |
| 92 | 1.10.1.1.4 | **Controle e Acompanhamento** |  | 1d | 2015-01-12 | 2015-01-12 |  |  |  |
| 93 | 1.10.1.1.4.1 | Gerar Release Notes Consolidado | milestone | 0d | 2015-01-12 | 2015-01-12 |  | 1d |  |
| 94 | 1.10.1.1.4.2 | Validação Escopo e Aprovação do Merge | milestone | 0d | 2015-01-12 | 2015-01-12 |  | 1d |  |
| 95 | 1.10.1.1.4.3 | Levantamento de Pendências (Mudanças e Merge) | milestone | 0d | 2015-01-12 | 2015-01-12 |  | 1d |  |
| 96 | 1.10.1.1.4.4 | Validação Planejamento Integrado e Escala | milestone | 0d | 2015-01-12 | 2015-01-12 |  | 1d |  |
| 97 | 1.10.1.1.5 | **Merge** |  | 1d | 2015-01-12 | 2015-01-12 |  |  |  |
| 98 | 1.10.1.1.5.1 | Migração para a trilha de Merge | milestone | 0d | 2015-01-12 | 2015-01-12 |  | 1d |  |
| 99 | 1.10.1.1.5.2 | Execução do merge Cidiz |  | 1d | 2015-02-12 | 2015-02-12 | 17 | -24d | 0d |
| 100 | 1.10.1.1.5.3 | Teste Pos Merge | milestone | 0d | 2015-01-12 | 2015-01-12 |  | 1d |  |
| 101 | 1.10.1.1.6 | **Promoção para produção** |  | 1d | 2015-01-12 | 2015-01-12 |  |  |  |
| 102 | 1.10.1.1.6.1 | Tramitação para preparação implantação | milestone | 0d | 2015-01-12 | 2015-01-12 |  | 1d |  |
| 103 | 1.10.1.1.6.2 | Implantação Release Cidiz |  | 1d | 2015-02-13 | 2015-02-13 | 99 | -24d | 0d |
